# SpiritGrain

Schedule from MS Project, 2020-03-09 to 2020-06-16, costs in ¥.
Microsoft

## Calendars

- 标准: Mon-Fri 08:00-12:00, 13:00-17:00; Sat-Sun off.

## Resources

| Resource | Group | Notes |
| --- | --- | --- |
| 张帅华 | 前端研发，需求经理 | 项目经理 |
| 杨锡涛 | 前端研发 | 产品经理 |
| 孙建旺 | 前端研发 | UE/UI设计师 |
| 景光赞 | 后台研发 | 技术专家/架构师 |
| 孙宇飞 | 前端研发 | 测试专家 |
| 李和谦 | 项目经理，后台研发 |  |
| 间接成本 |  |  |
| 储备资金 |  |  |

## Schedule

| ID | WBS | Task | Type | Duration | Start | Finish | Predecessors | Constraint | Resources | Work | Cost |
| --- | --- | --- | --- | --- | --- | --- | --- | --- | --- | --- | --- |
| 1 | 1 | **论证** |  | 10d | 2020-03-09 | 2020-03-20 |  |  | 间接成本 [0.1%]; 储备资金 [0.1%] | 457h | 35,965 |
| 2 | 1.1 | 项目愿景和商业机会 | manual | 2d | 2020-03-09 | 2020-03-11 |  |  | 杨锡涛 | 16h | 320 |
| 3 | 1.2 | 产品构思 | manual | 3d | 2020-03-09 | 2020-03-12 |  |  | 孙建旺 | 24h | 600 |
| 4 | 1.3 | 问题描述 | manual | 3d | 2020-03-09 | 2020-03-12 |  |  | 李和谦 | 24h | 720 |
| 5 | 1.4 | 用户分析 | manual | 3d | 2020-03-09 | 2020-03-12 |  |  | 孙宇飞 | 24h | 480 |
| 6 | 1.5 | 技术分析 | manual | 2d | 2020-03-09 | 2020-03-10 |  | start no earlier than 2020-03-09 | 景光赞 | 16h | 320 |
| 7 | 1.6 | 资源需求估计 | manual | 2d | 2020-03-09 | 2020-03-11 |  |  | 景光赞 | 16h | 320 |
| 8 | 1.7 | 风险评估 | manual | 2d | 2020-03-09 | 2020-03-11 |  |  | 张帅华 | 48h | 1,200 |
| 9 | 1.8 | 墨刀原型 | milestone, manual | 4d | 2020-03-13 | 2020-03-18 |  |  | 张帅华; 景光赞; 李和谦; 孙建旺; 孙宇飞; 杨锡涛 | 289h | 6,905 |
| 10 | 2 | **启动** |  | 7d | 2020-03-19 | 2020-03-30 | 1 |  | 间接成本 [0.1%]; 储备资金 [0.1%] | 128h | 8,280 |
| 11 | 2.1 | 组建核心团队 | manual | 1d | 2020-03-19 | 2020-03-19 |  |  | 孙建旺 | 8h | 200 |
| 12 | 2.2 | 干系人分析 | manual | 3d | 2020-03-21 | 2020-03-25 | 11 |  | 张帅华 | 96h | 2,400 |
| 13 | 2.3 | 里程碑计划 | manual | 1d | 2020-03-25 | 2020-03-25 | 12 |  | 景光赞 | 8h | 160 |
| 14 | 2.4 | 制定项目章程 | manual | 2d | 2020-03-25 | 2020-03-27 | 12 |  | 杨锡涛 | 16h | 320 |
| 15 | 2.5 | 项目启动大会 | milestone, manual | 0d | 2020-03-27 | 2020-03-27 | 14 |  | 景光赞; 李和谦; 孙建旺; 孙宇飞; 杨锡涛; 张帅华 |  |  |
| 16 | 3 | **规划** |  | 15d | 2020-04-02 | 2020-04-22 | 10 |  | 间接成本 [0.1%]; 储备资金 [0.1%] | 123h | 6,175 |
| 17 | 3.1 | **规划范围** |  | 4d | 2020-04-02 | 2020-04-07 |  |  |  | 33h | 865 |
| 18 | 3.1.1 | 制定需求说明书 | manual | 1d | 2020-04-02 | 2020-04-02 |  |  | 李和谦 | 8h | 240 |
| 19 | 3.1.2 | 界面设计 | manual | 1d | 2020-04-03 | 2020-04-03 |  |  | 孙建旺 | 8h | 200 |
| 20 | 3.1.3 | 详细设计说明书 | manual | 1d | 2020-04-04 | 2020-04-04 |  |  | 张帅华 | 9h | 225 |
| 21 | 3.1.4 | 项目范围说明书 | manual | 1d | 2020-04-07 | 2020-04-07 |  |  | 孙建旺 | 8h | 200 |
| 22 | 3.2 | **规划时间** |  | 4d | 2020-04-08 | 2020-04-13 | 17 |  |  | 41h | 1,025 |
| 23 | 3.2.1 | 排列工作包顺序 | manual | 1d | 2020-04-08 | 2020-04-08 |  |  | 杨锡涛 | 8h | 160 |
| 24 | 3.2.2 | 估算资源 | manual | 1d | 2020-04-09 | 2020-04-09 |  |  | 张帅华 | 9h | 225 |
| 25 | 3.2.3 | 估算持续时间 | manual | 1d | 2020-04-09 | 2020-04-09 |  |  | 李和谦 | 8h | 240 |
| 26 | 3.2.4 | 制定进度计划 | manual | 1d | 2020-04-10 | 2020-04-10 |  |  | 孙建旺 | 8h | 200 |
| 27 | 3.2.5 | 形成进度基准 | manual | 1d | 2020-04-13 | 2020-04-13 |  |  | 孙建旺 | 8h | 200 |

| ID | WBS | Task | Type | Duration | Start | Finish | Predecessors | Resources | Work | Cost |
| --- | --- | --- | --- | --- | --- | --- | --- | --- | --- | --- |
| 28 | 3.3 | **规划成本** |  | 3d | 2020-04-14 | 2020-04-16 | 22 |  | 49h | 1,185 |
| 29 | 3.3.1 | 项目成本估算 | manual | 1d | 2020-04-14 | 2020-04-14 |  | 景光赞 | 8h | 160 |
| 30 | 3.3.2 | 项目预算 | manual | 1d | 2020-04-14 | 2020-04-14 |  | 李和谦 | 8h | 240 |
| 31 | 3.3.3 | 形成范围基准 | manual | 1d | 2020-04-15 | 2020-04-15 |  | 孙建旺 | 8h | 200 |
| 32 | 3.3.4 | 规划质量 | manual | 1d | 2020-04-15 | 2020-04-15 |  | 张帅华 | 9h | 225 |
| 33 | 3.3.5 | 制定测试计划 | manual | 1d | 2020-04-16 | 2020-04-16 |  | 杨锡涛 | 8h | 160 |
| 34 | 3.3.6 | 制定测试用例 | manual | 1d | 2020-04-16 | 2020-04-16 |  | 孙建旺 | 8h | 200 |
| 35 | 4 | **执行与监控** |  | 36d | 2020-04-17 | 2020-06-05 | 16 | 间接成本 [0.1%]; 储备资金 [0.1%] | 554.5h | 113,187.5 |
| 36 | 4.1 | 团队沟通 | manual | 4d | 2020-04-22 | 2020-04-27 |  |  |  |  |
| 37 | 4.2 | **项目执行** |  | 26d | 2020-04-22 | 2020-05-27 | 36 |  | 193.5h | 4,397.5 |
| 38 | 4.2.1 | 数据库设计 | manual | 2d | 2020-04-22 | 2020-04-23 |  | 孙宇飞; 张帅华 | 49h | 1,145 |
| 39 | 4.2.2 | **用户相关** |  | 3d | 2020-04-24 | 2020-04-28 | 38 |  | 40h | 960 |
| 40 | 4.2.2.1 | **登陆注册** |  | 1d | 2020-04-24 | 2020-04-24 |  |  | 16h | 480 |
| 41 | 4.2.2.1.1 | QQ微信登陆注册 | manual | 1d | 2020-04-24 | 2020-04-24 |  | 李和谦 | 8h | 240 |
| 42 | 4.2.2.1.2 | 手机号登陆注册 | manual | 1d | 2020-04-24 | 2020-04-24 |  | 李和谦 | 8h | 240 |
| 43 | 4.2.2.2 | **个人中心** |  | 2d | 2020-04-27 | 2020-04-28 |  |  | 24h | 480 |
| 44 | 4.2.2.2.1 | 账号信息修改 | manual | 1d | 2020-04-27 | 2020-04-27 |  | 杨锡涛 [50%]; 景光赞 [50%] | 8h | 160 |
| 45 | 4.2.2.2.2 | 笔记管理 | manual | 1d | 2020-04-27 | 2020-04-27 |  | 杨锡涛 | 8h | 160 |
| 46 | 4.2.2.2.3 | 收藏笔记 | manual | 1d | 2020-04-28 | 2020-04-28 |  | 杨锡涛 | 8h | 160 |
| 47 | 4.2.3 | **笔记相关** |  | 10d | 2020-04-24 | 2020-05-08 | 38 |  | 48h | 1,080 |
| 48 | 4.2.3.1 | 笔记收集 | manual | 3d | 2020-04-24 | 2020-04-29 |  | 李和谦 [50%]; 杨锡涛 [50%] | 24h | 600 |
| 49 | 4.2.3.2 | 笔记管理 | manual | 3d | 2020-05-04 | 2020-05-06 | 48 | 孙宇飞 | 24h | 480 |
| 50 | 4.2.4 | **笔记展示** |  | 2d | 2020-05-13 | 2020-05-14 | 49 |  | 24.5h | 572.5 |
| 51 | 4.2.4.1 | 添加笔记评论 | manual | 2d | 2020-05-13 | 2020-05-14 |  | 孙宇飞 [50%]; 张帅华 [50%] | 24.5h | 572.5 |

| ID | WBS | Task | Type | Duration | Start | Finish | Predecessors | Resources | Work | Cost |
| --- | --- | --- | --- | --- | --- | --- | --- | --- | --- | --- |
| 52 | 4.2.5 | **管理系统相关** |  | 8d | 2020-05-15 | 2020-05-26 | 38 |  | 32h | 640 |
| 53 | 4.2.5.1 | 管理员信息 | manual | 2d | 2020-05-15 | 2020-05-18 |  | 杨锡涛 [50%]; 孙宇飞 [50%] | 16h | 320 |
| 54 | 4.2.5.2 | 用户信息 | manual | 2d | 2020-05-19 | 2020-05-20 |  | 杨锡涛 | 16h | 320 |
| 55 | 4.3 | **项目测试** |  | 8.12d | 2020-05-27 | 2020-06-05 | 37 |  | 265h | 5,750 |
| 56 | 4.3.1 | 制定测试计划 | manual | 21.88d | 2020-05-01 | 2020-05-30 |  | 孙宇飞 | 175h | 3,500 |
| 57 | 4.3.2 | 制定测试用例 | manual | 2d | 2020-05-29 | 2020-06-01 |  | 张帅华 | 81h | 2,025 |
| 58 | 4.3.3 | 用例测试 | manual | 1.12d | 2020-06-02 | 2020-06-02 |  | 孙建旺 | 9h | 225 |
| 59 | 4.4 | **项目监控** |  | 2d | 2020-04-30 | 2020-05-04 | 55 |  | 32h | 840 |
| 60 | 4.4.1 | 各项指标监控 | manual | 1d | 2020-04-30 | 2020-04-30 |  | 李和谦 | 8h | 240 |
| 61 | 4.4.2 | 监控评审 | manual | 1d | 2020-04-30 | 2020-04-30 |  | 孙建旺 | 8h | 200 |
| 62 | 4.4.3 | 变更评审 | manual | 1d | 2020-05-01 | 2020-05-01 | 61 | 孙宇飞 | 8h | 160 |
| 63 | 4.4.4 | 例会 | manual | 1d | 2020-05-01 | 2020-05-01 | 61 | 李和谦 | 8h | 240 |
| 64 | 4.5 | **管理干系人** |  | 1d | 2020-05-04 | 2020-05-05 |  |  | 24h | 600 |
| 65 | 4.5.1 | 发布项目信息 | manual | 1d | 2020-05-04 | 2020-05-05 | 63 | 李和谦 | 8h | 240 |
| 66 | 4.5.2 | 报告监控指标 | manual | 1d | 2020-05-04 | 2020-05-05 | 63 | 孙建旺 | 8h | 200 |
| 67 | 4.5.3 | 干系人沟通 | manual | 1d | 2020-05-04 | 2020-05-05 | 63 | 孙宇飞 | 8h | 160 |
| 68 | 4.6 | **团队建设** |  | 1d | 2020-05-05 | 2020-05-06 |  |  | 24h | 560 |
| 69 | 4.6.1 | 培训 | manual | 1d | 2020-05-05 | 2020-05-06 | 67 | 景光赞 | 8h | 160 |
| 70 | 4.6.2 | 娱乐活动 | manual | 1d | 2020-05-05 | 2020-05-06 | 67 | 杨锡涛 | 8h | 160 |
| 71 | 4.6.3 | 沟通 | manual | 1d | 2020-05-05 | 2020-05-06 | 67 | 李和谦 | 8h | 240 |
| 72 | 4.7 | 采购 | manual | 1d | 2020-05-05 | 2020-05-06 | 67 | 孙建旺 | 8h | 200 |
| 73 | 4.8 | 项目验收 | manual | 1d | 2020-05-06 | 2020-05-07 | 72 | 李和谦 | 8h | 240 |
| 74 | 5 | **收尾** |  | 6d | 2020-06-08 | 2020-06-16 | 35 | 间接成本 [0.1%]; 储备资金 [0.1%] | 40h | 2,560 |
| 75 | 5.1 | 项目终验 | manual | 2d | 2020-06-08 | 2020-06-09 |  | 景光赞 | 16h | 320 |
| 76 | 5.2 | 结束采购 | manual | 1d | 2020-06-10 | 2020-06-10 | 75 | 杨锡涛 | 8h | 160 |
| 77 | 5.3 | 项目内部收尾 | manual | 2d | 2020-06-11 | 2020-06-15 | 76 | 李和谦 | 16h | 480 |
