# 知否笔记-成本规划-李和谦

Schedule from MS Project, 2020-03-11 to 2020-06-16, costs in ¥, A marks actual dates.
Microsoft

## Calendars

- 标准: Mon-Fri 08:00-12:00, 13:00-17:00; Sat-Sun off.

## Resources

| Resource | Rate |
| --- | --- |
| 李和谦 | 50 |
| 孙建旺 | 50 |
| 景光赞 | 50 |
| 张帅华 | 50 |
| 孙宇飞 | 50 |
| 杨锡涛 | 50 |
| 阿里云服务器1年 | 144 |
| 间接成本 | 500 |
| 储备 | 500 |

## Schedule

| ID | WBS | Task | Type | Duration | Start | Finish | Predecessors | Resources | Work | Cost |
| --- | --- | --- | --- | --- | --- | --- | --- | --- | --- | --- |
| 1 | 1 | **启动** |  | 6d | 2020-03-11 | 2020-03-19 |  | 储备 | 48h | 2,900 |
| 2 | 1.1 | 组建核心团队 | manual | 1d | 2020-03-11 | 2020-03-12 |  | 李和谦 | 8h | 400 |
| 3 | 1.2 | 干系人分析 | manual | 1d | 2020-03-12 | 2020-03-13 | 2 | 孙建旺 | 8h | 400 |
| 4 | 1.3 | 里程碑计划 | manual | 1d | 2020-03-13 | 2020-03-16 | 3 | 孙宇飞 | 8h | 400 |
| 5 | 1.4 | 制定项目章程 | manual | 1d | 2020-03-16 | 2020-03-17 | 4 | 张帅华 | 8h | 400 |
| 6 | 1.5 | 项目启动大会 | manual | 1d | 2020-03-17 | 2020-03-18 | 5 | 景光赞 | 8h | 400 |
| 7 | 1.6 | 初期里程碑 | milestone, manual | 1d | 2020-03-18 | 2020-03-18 | 6 | 李和谦 | 8h | 400 |
| 8 | 2 | **规划** |  | 16d | 2020-03-18 | 2020-04-09 |  |  | 232h | 11,600 |
| 9 | 2.1 | **规划范围** |  | 2d | 2020-03-18 | 2020-03-20 |  |  | 48h | 2,400 |
| 10 | 2.1.1 | 制定需求说明书 | manual | 1d | 2020-03-18 | 2020-03-19 | 6 | 李和谦 | 8h | 400 |
| 11 | 2.1.2 | 界面设计 | manual | 1d | 2020-03-19 | 2020-03-20 | 6 | 孙建旺 | 8h | 400 |
| 12 | 2.1.3 | 详细设计说明书 | manual | 1d | 2020-03-19 | 2020-03-20 | 6 | 孙宇飞 | 8h | 400 |
| 13 | 2.1.4 | 范围说明书 | manual | 1d | 2020-03-19 | 2020-03-20 | 6 | 李和谦 | 8h | 400 |
| 14 | 2.1.5 | 创建WBS | manual | 1d | 2020-03-19 | 2020-03-20 | 6 | 景光赞 | 8h | 400 |
| 15 | 2.1.6 | 形成范围基准 | manual | 1d | 2020-03-18 | 2020-03-19 | 6 | 杨锡涛 | 8h | 400 |
| 16 | 2.2 | **规划时间** |  | 2d | 2020-03-20 | 2020-03-24 |  |  | 32h | 1,600 |
| 17 | 2.2.1 | 排列工作包顺序 | manual | 1d | 2020-03-19 | 2020-03-20 | 15 | 杨锡涛 | 8h | 400 |
| 18 | 2.2.2 | 估算资源 | manual | 1d | 2020-03-19 | 2020-03-20 | 15 | 张帅华 | 8h | 400 |
| 19 | 2.2.3 | 估算持续时间 | manual | 1d | 2020-03-20 | 2020-03-23 | 18 | 孙宇飞 | 8h | 400 |
| 20 | 2.2.4 | 制定进度计划 | manual | 1d | 2020-03-20 | 2020-03-23 | 18 | 张帅华 | 8h | 400 |
| 21 | 2.3 | **规划成本** |  | 2d | 2020-03-23 | 2020-03-25 |  |  | 16h | 800 |
| 22 | 2.3.1 | 项目成本估算 | manual | 1d | 2020-03-23 | 2020-03-24 | 20 | 孙建旺 | 8h | 400 |
| 23 | 2.3.2 | 项目预算 | manual | 1d | 2020-03-24 | 2020-03-25 | 22 | 孙宇飞 | 8h | 400 |
| 24 | 2.4 | **规划质量** |  | 2d | 2020-03-25 | 2020-03-27 |  | 张帅华 | 32h | 1,600 |
| 25 | 2.4.1 | 制定测试计划 | manual | 1d | 2020-03-25 | 2020-03-26 | 23 | 李和谦 | 8h | 400 |
| 26 | 2.4.2 | 制定测试用例 | manual | 1d | 2020-03-26 | 2020-03-27 | 25 | 孙建旺 | 8h | 400 |

| ID | WBS | Task | Type | Duration | Start | Finish | Predecessors | Complete | Remaining | Resources | Work | Actual work | Cost | Actual cost |
| --- | --- | --- | --- | --- | --- | --- | --- | --- | --- | --- | --- | --- | --- | --- |
| 27 | 2.5 | **规划人力资源** |  | 2d | 2020-03-27 | 2020-03-31 |  |  |  | 孙宇飞 | 32h |  | 1,600 |  |
| 28 | 2.5.1 | 制定人力资源计划 | manual | 1d | 2020-03-27 | 2020-03-30 | 26 |  |  | 张帅华 | 8h |  | 400 |  |
| 29 | 2.5.2 | 制定人员配备管理计划 | manual | 1d | 2020-03-30 | 2020-03-31 | 28 |  |  | 景光赞 | 8h |  | 400 |  |
| 30 | 2.6 | **规划沟通** |  | 1d | 2020-03-31 | 2020-04-01 |  |  |  |  | 8h |  | 400 |  |
| 31 | 2.6.1 | 制定沟通管理计划 | manual | 1d | 2020-03-30 | 2020-03-31 | 28 |  |  | 杨锡涛 | 8h |  | 400 |  |
| 32 | 2.7 | **规划采购** |  | 1d | 2020-04-01 | 2020-04-02 |  |  |  |  | 16h |  | 800 |  |
| 33 | 2.7.1 | 自制外购分析 | manual | 1d | 2020-04-01 | 2020-04-02 | 31 |  |  | 杨锡涛 | 8h |  | 400 |  |
| 34 | 2.7.2 | 制定采购文件 | manual | 1d | 2020-03-31 | 2020-04-01 | 31 |  |  | 孙建旺 | 8h |  | 400 |  |
| 35 | 2.8 | **规划风险** |  | 1d | 2020-04-02 | 2020-04-03 |  |  |  |  | 24h |  | 1,200 |  |
| 36 | 2.8.1 | 识别风险 | manual | 1d | 2020-04-01 | 2020-04-02 | 34 |  |  | 李和谦 | 8h |  | 400 |  |
| 37 | 2.8.2 | 风险分析 | manual | 1d | 2020-04-01 | 2020-04-02 | 34 |  |  | 孙建旺 | 8h |  | 400 |  |
| 38 | 2.8.3 | 制定风险登记册 | manual | 1d | 2020-04-01 | 2020-04-02 | 34 |  |  | 孙宇飞 | 8h |  | 400 |  |
| 39 | 2.9 | 规划整合 | manual | 1d | 2020-04-01 | 2020-04-02 | 34 |  |  | 张帅华 | 8h |  | 400 |  |
| 40 | 2.10 | 中期里程碑 | manual | 2d | 2020-04-02 | 2020-04-06 | 39 |  |  | 景光赞 | 16h |  | 800 |  |
| 41 | 3 | **执行与监控** |  | 40d | 2020-04-06 A | 2020-06-01 |  | 5% | 37.82d |  | 440h | 24h | 22,144 | 1,210.54 |
| 42 | 3.1 | 组建项目团队 | manual | 1d | 2020-04-06 | 2020-04-06 | 40 |  |  | 李和谦 | 8h |  | 400 |  |
| 43 | 3.2 | **项目执行** |  | 15.12d | 2020-04-07 A | 2020-04-28 |  | 7% | 14.02d | 阿里云服务器1年 | 328h | 24h | 16,544 | 1,210.54 |
| 44 | 3.2.1 | **前台UI界面** |  | 15d | 2020-04-07 | 2020-04-28 |  |  |  |  | 120h |  | 6,000 |  |
| 45 | 3.2.1.1 | 首页 | manual | 2d | 2020-04-07 | 2020-04-08 | 42 |  |  | 孙宇飞 | 16h |  | 800 |  |
| 46 | 3.2.1.2 | 分类展示页 | manual | 2d | 2020-04-09 | 2020-04-10 | 45 |  |  | 孙宇飞 | 16h |  | 800 |  |
| 47 | 3.2.1.3 | 个人中心页 | manual | 2d | 2020-04-13 | 2020-04-14 | 46 |  |  | 张帅华 | 16h |  | 800 |  |
| 48 | 3.2.1.4 | 发布笔记页 | manual | 1d | 2020-04-15 | 2020-04-15 | 47 |  |  | 孙建旺 | 8h |  | 400 |  |
| 49 | 3.2.1.5 | 管理笔记页 | manual | 1d | 2020-04-16 | 2020-04-16 | 48 |  |  | 杨锡涛 | 8h |  | 400 |  |
| 50 | 3.2.1.6 | 收藏的笔记页 | manual | 2d | 2020-04-17 | 2020-04-20 | 49 |  |  | 杨锡涛 | 16h |  | 800 |  |
| 51 | 3.2.1.7 | 通知页 | manual | 1d | 2020-04-21 | 2020-04-21 | 50 |  |  | 张帅华 | 8h |  | 400 |  |
| 52 | 3.2.1.8 | 登录、注册页 | manual | 1d | 2020-04-22 | 2020-04-22 | 51 |  |  | 孙建旺 | 8h |  | 400 |  |
| 53 | 3.2.1.9 | 详情页 | manual | 1d | 2020-04-23 | 2020-04-23 | 52 |  |  | 张帅华 | 8h |  | 400 |  |
| 54 | 3.2.1.10 | 管理系统前台 | manual | 2d | 2020-04-24 | 2020-04-27 | 53 |  |  | 张帅华 | 16h |  | 800 |  |

| ID | WBS | Task | Type | Duration | Start | Finish | Predecessors | Complete | Remaining | Resources | Work | Actual work | Cost | Actual cost |
| --- | --- | --- | --- | --- | --- | --- | --- | --- | --- | --- | --- | --- | --- | --- |
| 55 | 3.2.2 | **后台** |  | 15d | 2020-04-07 A | 2020-04-28 |  | 12% | 13.27d |  | 208h | 24h | 10,400 | 1,200 |
| 56 | 3.2.2.1 | **用户模块** |  | 4d | 2020-04-07 A | 2020-04-13 |  | 38% | 2.5d |  | 64h | 24h | 3,200 | 1,200 |
| 57 | 3.2.2.1.1 | 邮箱注册 | manual | 1d | 2020-04-07 A | 2020-04-07 A | 42 | 100% |  | 景光赞 | 8h | 8h | 400 | 400 |
| 58 | 3.2.2.1.2 | 邮箱登录、退出 | manual | 1d | 2020-04-07 A | 2020-04-07 A | 42 | 100% |  | 景光赞; 李和谦 | 8h | 8h | 400 | 400 |
| 59 | 3.2.2.1.3 | 找回密码 | manual | 1d | 2020-04-08 A | 2020-04-08 A | 58 | 100% |  | 李和谦 | 8h | 8h | 400 | 400 |
| 60 | 3.2.2.1.4 | 关注他人 | manual | 1d | 2020-04-09 | 2020-04-09 | 59 |  |  | 景光赞 | 8h |  | 400 |  |
| 61 | 3.2.2.1.5 | 收藏笔记 | manual | 1d | 2020-04-10 | 2020-04-10 | 60 |  |  | 孙建旺 | 8h |  | 400 |  |
| 62 | 3.2.2.1.6 | 通知接收 | manual | 2d | 2020-04-09 | 2020-04-13 | 58 |  |  | 李和谦 | 16h |  | 800 |  |
| 63 | 3.2.2.1.7 | 修改个人信息 | manual | 1d | 2020-04-10 | 2020-04-10 | 60 |  |  | 景光赞 | 8h |  | 400 |  |
| 64 | 3.2.2.2 | 用户模块测试 | manual | 1d | 2020-04-13 | 2020-04-13 | 63 |  |  | 孙建旺 | 8h |  | 400 |  |
| 65 | 3.2.2.3 | **笔记展示模块** |  | 3d | 2020-04-14 | 2020-04-17 |  |  |  |  | 64h |  | 3,200 |  |
| 66 | 3.2.2.3.1 | 首页展示 | manual | 1d | 2020-04-14 | 2020-04-14 | 64 |  |  | 景光赞 | 8h |  | 400 |  |
| 67 | 3.2.2.3.2 | 笔记详情 | manual | 1d | 2020-04-14 | 2020-04-14 | 64 |  |  | 李和谦 | 8h |  | 400 |  |
| 68 | 3.2.2.3.3 | 搜索笔记 | manual | 2d | 2020-04-15 | 2020-04-16 | 67 |  |  | 李和谦 | 16h |  | 800 |  |
| 69 | 3.2.2.3.4 | 按分类展示笔记 | manual | 1d | 2020-04-15 | 2020-04-15 | 66 |  |  | 孙宇飞 | 8h |  | 400 |  |
| 70 | 3.2.2.3.5 | 展示相关学霸 | manual | 1d | 2020-04-15 | 2020-04-15 | 66 |  |  | 景光赞 | 8h |  | 400 |  |
| 71 | 3.2.2.3.6 | 笔记评论 | manual | 1d | 2020-04-15 | 2020-04-15 | 67 |  |  | 张帅华 | 8h |  | 400 |  |
| 72 | 3.2.2.3.7 | 评论展示 | manual | 1d | 2020-04-16 | 2020-04-16 | 71 |  |  | 景光赞 | 8h |  | 400 |  |
| 73 | 3.2.2.4 | 笔记展示模块测试 | manual | 1d | 2020-04-17 | 2020-04-17 | 72 |  |  | 李和谦 | 8h |  | 400 |  |
| 74 | 3.2.2.5 | **管理笔记模块** |  | 4d | 2020-04-20 | 2020-04-24 |  |  |  |  | 32h |  | 1,600 |  |
| 75 | 3.2.2.5.1 | 发布笔记 | manual | 1d | 2020-04-20 | 2020-04-20 | 73 |  |  | 景光赞 | 8h |  | 400 |  |
| 76 | 3.2.2.5.2 | 查看笔记 | manual | 1d | 2020-04-21 | 2020-04-21 | 75 |  |  | 李和谦 | 8h |  | 400 |  |
| 77 | 3.2.2.5.3 | 修改笔记 | manual | 1d | 2020-04-22 | 2020-04-22 | 76 |  |  | 景光赞 | 8h |  | 400 |  |
| 78 | 3.2.2.5.4 | 删除笔记 | manual | 1d | 2020-04-23 | 2020-04-23 | 77 |  |  | 李和谦 | 8h |  | 400 |  |
| 79 | 3.2.2.6 | 管理笔记模块测试 | manual | 1d | 2020-04-24 | 2020-04-24 | 78 |  |  | 李和谦 | 8h |  | 400 |  |

| ID | WBS | Task | Type | Duration | Start | Finish | Predecessors | Resources | Work | Cost |
| --- | --- | --- | --- | --- | --- | --- | --- | --- | --- | --- |
| 80 | 3.2.2.7 | **管理系统** |  | 1d | 2020-04-27 | 2020-04-28 |  |  | 24h | 1,200 |
| 81 | 3.2.2.7.1 | 审核笔记 | manual | 1d | 2020-04-27 | 2020-04-27 | 79 | 李和谦 | 8h | 400 |
| 82 | 3.2.2.7.2 | 管理用户 | manual | 1d | 2020-04-27 | 2020-04-28 | 79 | 景光赞 | 8h | 400 |
| 83 | 3.2.2.7.3 | 管理笔记 | manual | 1d | 2020-04-27 | 2020-04-28 | 79 | 孙建旺 | 8h | 400 |
| 84 | 3.3 | 终期里程碑 | milestone, manual | 1d | 2020-04-29 | 2020-04-29 | 83 | 李和谦 | 8h | 400 |
| 85 | 3.4 | **项目监控** |  | 2d | 2020-04-30 | 2020-05-04 |  |  | 32h | 1,600 |
| 86 | 3.4.1 | 各项指标监控 | manual | 1d | 2020-04-30 | 2020-04-30 | 84 | 李和谦 | 8h | 400 |
| 87 | 3.4.2 | 监控评审 | manual | 1d | 2020-04-30 | 2020-04-30 | 84 | 孙建旺 | 8h | 400 |
| 88 | 3.4.3 | 变更评审 | manual | 1d | 2020-05-01 | 2020-05-01 | 87 | 孙宇飞 | 8h | 400 |
| 89 | 3.4.4 | 例会 | manual | 1d | 2020-05-01 | 2020-05-01 | 87 | 李和谦 | 8h | 400 |
| 90 | 3.5 | **管理干系人** |  | 1d | 2020-05-04 | 2020-05-05 |  |  | 24h | 1,200 |
| 91 | 3.5.1 | 发布项目信息 | manual | 1d | 2020-05-04 | 2020-05-05 | 89 | 李和谦 | 8h | 400 |
| 92 | 3.5.2 | 报告监控指标 | manual | 1d | 2020-05-04 | 2020-05-05 | 89 | 孙建旺 | 8h | 400 |
| 93 | 3.5.3 | 干系人沟通 | manual | 1d | 2020-05-04 | 2020-05-05 | 89 | 孙宇飞 | 8h | 400 |
| 94 | 3.6 | **团队建设** |  | 1d | 2020-05-05 | 2020-05-06 |  |  | 24h | 1,200 |
| 95 | 3.6.1 | 培训 | manual | 1d | 2020-05-05 | 2020-05-06 | 93 | 景光赞 | 8h | 400 |
| 96 | 3.6.2 | 娱乐活动 | manual | 1d | 2020-05-05 | 2020-05-06 | 93 | 杨锡涛 | 8h | 400 |
| 97 | 3.6.3 | 沟通 | manual | 1d | 2020-05-05 | 2020-05-06 | 93 | 李和谦 | 8h | 400 |
| 98 | 3.7 | 采购 | manual | 1d | 2020-05-05 | 2020-05-06 | 93 | 孙建旺 | 8h | 400 |
| 99 | 3.8 | 项目验收 | manual | 1d | 2020-05-06 | 2020-05-07 | 98 | 李和谦 | 8h | 400 |
| 100 | 4 | **收尾** |  | 6d | 2020-06-08 | 2020-06-16 |  |  | 40h | 2,000 |
| 101 | 4.1 | 项目终验 | manual | 2d | 2020-06-08 | 2020-06-09 | 99 | 景光赞 | 16h | 800 |
| 102 | 4.2 | 结束采购 | manual | 1d | 2020-06-10 | 2020-06-10 | 101 | 杨锡涛 | 8h | 400 |
| 103 | 4.3 | 项目内部收尾 | manual | 2d | 2020-06-11 | 2020-06-15 | 102 | 李和谦 | 16h | 800 |
